# NBIA 5.0

Schedule from MS Project, 2010-09-27 to 2011-01-07, A marks actual dates.
NCI

## Calendars

- Standard: Mon-Fri 08:00-12:00, 13:00-17:00; Sat-Sun off. Exceptions (off unless hours are given): 2010-11-25 to 2010-11-26, 2010-12-24, 2010-12-27 to 2010-12-31.

## Resources

| Resource |
| --- |
| Eric |
| Jim |
| 3 |
| Qinyan |
| Quy |
| Anna |
| Prakash |
| Eric2 |
| Brian |

## Schedule

| ID | WBS | Task | Type | Duration | Start | Finish | Predecessors | Complete | Total slack | Constraint | Resources | Work | Actual work |
| --- | --- | --- | --- | --- | --- | --- | --- | --- | --- | --- | --- | --- | --- |
| 1 | 1 | Ivy Repository Migration |  | 1w | 2010-09-27 A | 2010-10-01 A |  | 100% |  |  | Eric | 40h | 40h |
| 2 | 2 | **Data Access Enhancements** |  | 28d | 2010-10-04 A | 2010-11-10 A |  | 100% |  |  |  | 304h | 304h |
| 3 | 2.1 | Split webapp dao-business logic |  | 1w | 2010-10-04 A | 2010-10-08 A |  | 100% |  |  | Eric | 40h | 40h |
| 4 | 2.2 | Capture baseline benchmarks |  | 1w | 2010-10-04 A | 2010-10-08 A |  | 100% |  |  | Jim | 40h | 40h |
| 5 | 2.3 | Introduce Spring data access into CTP |  | 2w | 2010-10-04 A | 2010-10-15 A |  | 100% |  |  | Jim | 80h | 80h |
| 6 | 2.4 | Post-Spring Benchmarks |  | 2d | 2010-10-18 A | 2010-10-19 A | 5 | 100% |  |  | Jim | 16h | 16h |
| 7 | 2.5 | CTP upgrade to X42 |  | 1w | 2010-10-20 A | 2010-10-26 A |  | 100% |  |  | Jim | 40h | 40h |
| 8 | 2.6 | Introduce Spring data access into webapp |  | 2w | 2010-10-11 A | 2010-10-22 A | 3 | 100% |  |  | Jim | 80h | 80h |
| 9 | 2.7 | Evaluate possibility of merging CTP-webapp data access |  | 1d | 2010-11-10 A | 2010-11-10 A |  | 100% |  |  | Jim | 8h | 8h |
| 10 | 3 | **Oracle Support** |  | 25d | 2010-10-11 A | 2010-11-12 A |  | 100% |  |  |  | 280h | 280h |
| 11 | 3.1 | Translate Schema |  | 2w | 2010-10-11 A | 2010-10-22 A |  | 100% |  |  | Eric | 80h | 80h |
| 12 | 3.2 | Setup/Request new Oracle instance with migration |  | 2w | 2010-10-25 A | 2010-11-05 A | 11 | 100% |  |  | Eric2 | 80h | 80h |
| 13 | 3.3 | Translate custom SQL in Hibernate mappings |  | 1w | 2010-10-25 A | 2010-10-29 A |  | 100% |  |  | Eric | 40h | 40h |
| 14 | 3.4 | Setup Oracle-specific Liquibase configuration |  | 2d | 2010-11-01 A | 2010-11-02 A |  | 100% |  |  | Eric | 16h | 16h |
| 15 | 3.5 | Custom SQL in patient search |  | 2d | 2010-11-03 A | 2010-11-04 A |  | 100% |  |  | Eric | 16h | 16h |
| 16 | 3.6 | Custom SQL in submission history |  | 2d | 2010-11-05 A | 2010-11-08 A |  | 100% |  |  | Eric | 16h | 16h |
| 17 | 3.7 | Deployment Scripts and GUI Installer |  | 4d | 2010-11-09 A | 2010-11-12 A | 16 | 100% |  |  | Eric | 32h | 32h |
| 18 | 4 | **Ultrasound search (Round 1)** |  | 37d | 2010-09-27 A | 2010-11-16 A |  | 100% |  |  |  | 296h | 296h |
| 19 | 4.1 | General Research |  | 1w | 2010-09-27 A | 2010-10-01 A |  | 100% |  |  | Qinyan | 40h | 40h |
| 20 | 4.2 | Map SME requirements to concrete DICOM tags and wireframe |  | 2w | 2010-10-04 A | 2010-10-15 A |  | 100% |  |  | Qinyan | 80h | 80h |
| 21 | 4.3 | Customize Classic Search UI to include US fields |  | 1w | 2010-10-18 A | 2010-10-22 A |  | 100% |  |  | Qinyan | 40h | 40h |
| 22 | 4.4 | Customize view series page to handle ultrasound |  | 2w | 2010-10-25 A | 2010-11-05 A |  | 100% |  |  | Qinyan | 80h | 80h |
| 23 | 4.5 | Map DICOM tags to NBIA internal domain model (includes code changes) |  | 7d | 2010-11-08 A | 2010-11-16 A |  | 100% |  |  | Qinyan | 56h | 56h |
| 24 | 5 | ****** SCOPE NAILED DOWN ****** | milestone | 0d | 2010-09-27 | 2010-09-27 |  |  | 66d |  |  |  |  |
| 25 | 6 | HL7 v3 Training |  | 2d | 2010-11-15 A | 2010-11-16 A |  | 100% |  | must start on 2010-11-15 | Eric | 16h | 16h |
| 26 | 7 | LIDC annotation of annotation re-generation |  | 5d | 2010-11-16 A | 2010-11-22 A |  | 100% |  | must start on 2010-11-16 | Qinyan | 40h | 40h |

| ID | WBS | Task | Type | Duration | Start | Finish | Predecessors | Complete | Remaining | Total slack | Free slack | Constraint | Resources | Work | Actual work |
| --- | --- | --- | --- | --- | --- | --- | --- | --- | --- | --- | --- | --- | --- | --- | --- |
| 27 | 8 | **Ultrasound Search (Round 2)** |  | 12d | 2010-11-16 A | 2010-12-03 A |  | 100% |  |  |  |  |  | 144h | 144h |
| 28 | 8.1 | Deploy NBIA for Anna to experiment on |  | 1d | 2010-11-16 A | 2010-11-16 A |  | 100% |  |  |  |  | Jim | 8h | 8h |
| 29 | 8.2 | SME experimentation |  | 1w | 2010-11-17 A | 2010-11-23 A | 28 | 100% |  |  |  |  | Anna | 40h | 40h |
| 30 | 8.3 | Review SME feedback |  | 1d | 2010-11-24 A | 2010-11-24 A | 29 | 100% |  |  |  |  | Eric; Qinyan | 16h | 16h |
| 31 | 8.4 | Map DICOM tags to NBIA internal domain model (includes code changes) |  | 1w | 2010-11-29 A | 2010-12-03 A | 30 | 100% |  |  |  |  | Qinyan | 40h | 40h |
| 32 | 8.5 | Add modality info to web search UI |  | 1w | 2010-11-19 A | 2010-11-29 A |  | 100% |  |  |  | must start on 2010-11-19 | Prakash | 40h | 40h |
| 33 | 9 | **NBIA 5.0** |  | 23d? | 2010-11-12 A | 2010-12-16 |  | 55% | 10.38d? | 0d |  |  |  | 386.4h | 210.4h |
| 34 | 9.1 | Decouple deletion dao-business logic (Data Access Enhancements) |  | 1w | 2010-11-17 A | 2010-11-23 A |  | 100% |  |  |  | must start on 2010-11-17 | Jim | 40h | 40h |
| 35 | 9.2 | AHP3 Support |  | 14d? | 2010-11-16 A | 2010-12-07 A |  | 100% |  |  |  | must start on 2010-11-16 | Eric2 | 112h | 112h |
| 36 | 9.3 | Update Installation Guide |  | 1d | 2010-11-17 A | 2010-11-17 A |  | 100% |  |  |  | must start on 2010-11-17 | Eric | 4.4h | 4.4h |
| 37 | 9.4 | Appsupport Review of Installation Guide |  | 3d | 2010-11-19 A | 2010-11-23 A |  | 100% |  |  |  | must start on 2010-11-19 | Brian | 24h | 24h |
| 38 | 9.5 | Push Tag #1 to QA |  | 1h | 2010-11-12 A | 2010-11-12 A |  | 100% |  |  |  | start no earlier than 2010-11-12 | Eric | 1h | 1h |
| 39 | 9.6 | Prepare release notes |  | 4h | 2010-11-12 A | 2010-11-12 A | 38 | 100% |  |  |  |  | Eric | 4h | 4h |
| 40 | 9.7 | Push Tag #2 to QA |  | 1h | 2010-11-24 A | 2010-11-24 A | 34, 39 | 100% |  |  |  |  | Eric | 1h | 1h |
| 41 | 9.8 | QA Testing |  | 16d | 2010-11-18 | 2010-12-13 | 38 |  |  | 0d |  | must finish on 2010-12-13 | Quy | 128h |  |
| 42 | 9.9 | Migrate staging MySQL -> Oracle |  | 3d | 2010-12-03 A | 2010-12-07 A |  | 100% |  |  |  | must finish on 2010-12-07 | Eric | 24h | 24h |
| 43 | 9.10 | NBIA 5.0 Staging |  | 1d | 2010-12-13 | 2010-12-13 | 42 |  |  | 0d |  | must start on 2010-12-13 | Eric | 8h |  |
| 44 | 9.11 | Sanity Regression against staging |  | 2d? | 2010-12-13 | 2010-12-14 | 43 |  |  | -1d | 0d | must start on 2010-12-13 | Eric | 16h |  |
| 45 | 9.12 | Order AppScan on staging | milestone | 0d | 2010-12-13 | 2010-12-13 |  |  |  | 0d |  | must start on 2010-12-13 | Eric |  |  |
| 46 | 9.13 | Migrate production MySQL -> Oracle |  | 2d | 2010-12-13 | 2010-12-14 |  |  |  | 0d |  | must start on 2010-12-13 | Eric | 16h |  |
| 47 | 9.14 | NBIA 5.0 Production |  | 1d | 2010-12-16 | 2010-12-16 | 46, 45 |  |  | 0d |  | must start on 2010-12-16 | Eric | 8h |  |
| 48 | 10 | **RSNA (Jim)** |  | 5d | 2010-11-29 A | 2010-12-03 A |  | 100% |  |  |  |  |  | 40h | 40h |
| 49 | 10.1 | CTP meeting with John |  | 1d | 2010-11-29 A | 2010-11-29 A |  | 100% |  |  |  | must start on 2010-11-29 | Jim | 8h | 8h |
| 50 | 10.2 | Attend Session of Steamline Imaging Server |  | 1d | 2010-11-30 A | 2010-11-30 A | 49 | 100% |  |  |  |  | Jim | 8h | 8h |
| 51 | 10.3 | Check out google earth Imaging Technology |  | 1d | 2010-12-01 A | 2010-12-01 A | 50 | 100% |  |  |  |  | Jim | 8h | 8h |
| 52 | 10.4 | Research for Path Imaging Storage in DICOM format |  | 1d | 2010-12-02 A | 2010-12-02 A | 51 | 100% |  |  |  | start no earlier than 2010-11-29 | Jim | 8h | 8h |
| 53 | 10.5 | Attend session of Ultrasound Imaging to seek a better way to implement NBIA |  | 4h | 2010-12-03 A | 2010-12-03 A | 52 | 100% |  |  |  |  | Jim | 4h | 4h |
| 54 | 10.6 | Check out some products with Path Imaging Storage |  | 4h | 2010-12-03 A | 2010-12-03 A | 53 | 100% |  |  |  | finish no earlier than 2010-12-03 | Jim | 4h | 4h |

Notes:
- 50: Fake dependency here to make life easier

| ID | WBS | Task | Duration | Start | Finish | Total slack | Constraint |
| --- | --- | --- | --- | --- | --- | --- | --- |
| 55 | 11 | **Bug Fixing** | 12d | 2010-11-17 | 2010-12-06 | 0d |  |
| 56 | 11.1 | Add warning text to GUI installer about potential to wipe out CTP storage system | 3h | 2010-11-17 | 2010-11-17 | 0d | must start on 2010-11-17 |
| 57 | 11.2 | GUI installer fails on upgrade from NBIA 4.4 | 2d | 2010-11-18 | 2010-11-19 | 0d | must start on 2010-11-18 |
| 58 | 11.3 | Zipping of download basket returns empty basket | 1d | 2010-11-19 | 2010-11-19 | 0d | must start on 2010-11-19 |
| 59 | 11.4 | GUI installer fails when doing install with MySQL | 4h | 2010-11-23 | 2010-11-23 | 0d | must start on 2010-11-23 |
| 60 | 11.5 | FTP downloads do not record the download the same way the HTTP and Download Mgr downloads do | 4d | 2010-12-01 | 2010-12-06 | 0d | must start on 2010-12-01 |
| 61 | 11.6 | FTP download that includes remote series fails | 2d | 2010-12-02 | 2010-12-03 | 0d | must start on 2010-12-02 |
| 62 | 11.7 | NCIA grid service port number updating from 21080 to 8080 | 2d | 2010-12-01 | 2010-12-02 | 0d | must start on 2010-12-01 |
| 63 | 11.8 | Upgrading NBIA 4.4 to 5.0 GUI Installation failed (AHP3 regression) | 1d | 2010-12-03 | 2010-12-03 | 0d | must start on 2010-12-03 |
| 64 | 12 | **Transition Documentation** | 1d? | 2010-09-27 | 2010-09-27 | 66d |  |
| 65 | 12.1 | Submission Reports | 1d? | 2010-09-27 | 2010-09-27 | 66d |  |
| 66 | 12.2 | Grid Service | 1d? | 2010-09-27 | 2010-09-27 | 66d |  |
| 67 | 12.3 | Remote Search | 1d? | 2010-09-27 | 2010-09-27 | 66d |  |
| 68 | 12.4 | Cedara | 1d? | 2010-09-27 | 2010-09-27 | 66d |  |
| 69 | 12.5 | QC Tool | 1d? | 2010-09-27 | 2010-09-27 | 66d |  |
| 70 | 12.6 | Shared List | 1d? | 2010-09-27 | 2010-09-27 | 66d |  |
| 71 | 12.7 | Collection Description | 1d? | 2010-09-27 | 2010-09-27 | 66d |  |
| 72 | 12.8 | Dynamic Search | 1d? | 2010-09-27 | 2010-09-27 | 66d |  |
| 73 | 12.9 | CTP | 1d? | 2010-09-27 | 2010-09-27 | 66d |  |
| 74 | 12.10 | Database Adapter | 1d? | 2010-09-27 | 2010-09-27 | 66d |  |
| 75 | 12.11 | Deletion | 1d? | 2010-09-27 | 2010-09-27 | 66d |  |
| 76 | 12.12 | Saved Query | 1d? | 2010-09-27 | 2010-09-27 | 66d |  |
| 77 | 12.13 | Data Basket | 1d? | 2010-09-27 | 2010-09-27 | 66d |  |
| 78 | 12.14 | HTTP/FTP Download | 1d? | 2010-09-27 | 2010-09-27 | 66d |  |
| 79 | 12.15 | Download Manager | 1d? | 2010-09-27 | 2010-09-27 | 66d |  |

Notes:
- 55: add subtask here for every bug fixed

| ID | WBS | Task | Duration | Start | Finish | Predecessors | Complete | Remaining | Total slack | Free slack | Constraint | Resources | Work | Actual work |
| --- | --- | --- | --- | --- | --- | --- | --- | --- | --- | --- | --- | --- | --- | --- |
| 80 | 13 | **External Model Harmonization** | 49d | 2010-09-27 A | 2010-12-06 A |  | 100% |  |  |  |  |  | 24h | 24h |
| 81 | 13.1 | CBIIT Self-Study on DSR,metadata,etc. pt 1 | 2d | 2010-09-27 A | 2010-09-28 A |  | 100% |  |  |  | must start on 2010-11-29 | Prakash | 16h | 16h |
| 82 | 13.2 | CBIIT Self-Study on DSR,metadata,etc. pt 2 | 1d | 2010-12-06 A | 2010-12-06 A |  | 100% |  |  |  | must start on 2010-12-06 | Prakash | 8h | 8h |
| 83 | 14 | **AIM Search Prototype** | 8.5d | 2010-12-01 A | 2010-12-13 |  | 90% | 0.85d | 8.5d |  |  |  | 40h | 36h |
| 84 | 14.1 | Search UI | 3d | 2010-12-01 A | 2010-12-03 A |  | 100% |  |  |  | must start on 2010-12-01 | Eric | 24h | 24h |
| 85 | 14.2 | **AIM Submission** | 5.5d | 2010-12-06 A | 2010-12-13 |  | 75% | 1.38d | 8.5d | 0d |  |  | 16h | 12h |
| 86 | 14.2.1 | Annotation Recognizer | 4h | 2010-12-06 A | 2010-12-06 A | 84 | 100% |  |  |  |  | Eric | 4h | 4h |
| 87 | 14.2.2 | AIM Parsing | 1d | 2010-12-09 A | 2010-12-09 | 86 | 50% | 0.5d | 10d |  |  | Eric | 8h | 4h |
| 88 | 14.2.3 | Add relational tables | 4h | 2010-12-13 A | 2010-12-13 A | 87 | 100% |  |  |  |  | Eric | 4h | 4h |
| 89 | 15 | **Vacations** | 1d? | 2010-09-27 | 2010-09-27 |  |  |  | 66d |  |  |  |  |  |
| 90 | 15.1 | Eric (11/26,12/13, 12/20 - ? ) | 1d? | 2010-09-27 | 2010-09-27 |  |  |  | 66d |  |  |  |  |  |
| 91 | 15.2 | Jim (11/26, 12/27-12/31) | 1d? | 2010-09-27 | 2010-09-27 |  |  |  | 66d |  |  |  |  |  |
| 92 | 15.3 | Qinyan (11/26, 12/27-12/31) | 1d? | 2010-09-27 | 2010-09-27 |  |  |  | 66d |  |  |  |  |  |
| 93 | 15.4 | Praskash (11/26, 12/29-12/31) | 1d? | 2010-09-27 | 2010-09-27 |  |  |  | 66d |  |  |  |  |  |
| 94 | 16 | **Ultrasound Search Revisited Part 3 (branch)** | 19d | 2010-12-06 A | 2011-01-07 |  | 15% | 16.23d | 0d |  |  |  | 192h | 28h |
| 95 | 16.1 | Customize Classic Search UI to include US fields | 1w | 2010-12-06 A | 2010-12-10 | 31 | 50% | 0.5w | 13d | 0d |  | Qinyan | 40h | 20h |
| 96 | 16.2 | Update submission module to index tags | 1w | 2010-12-07 A | 2010-12-13 | 31 | 20% | 0.8w | 0d |  |  | Jim | 40h | 8h |
| 97 | 16.3 | Add fields to dynamic search | 1d | 2010-12-13 | 2010-12-13 | 95 |  |  | 13d |  |  | Jim | 8h |  |
| 98 | 16.4 | **Update search to include ultrasound tags** | 8d | 2010-12-14 | 2010-12-23 |  |  |  | 0d |  |  |  | 64h |  |
| 99 | 16.4.1 | Code | 1w | 2010-12-14 | 2010-12-20 | 96 |  |  | 0d |  |  | Qinyan | 40h |  |
| 100 | 16.4.2 | Unit Test | 3d | 2010-12-21 | 2010-12-23 | 99 |  |  | 0d |  |  | Qinyan | 24h |  |
| 101 | 16.5 | Remote Search impact | 1w | 2011-01-03 | 2011-01-07 | 98 |  |  | 0d |  |  | Qinyan | 40h |  |
| 102 | 17 | **AIM Search Prototype Part 2** | 5d | 2010-12-13 A | 2010-12-20 |  | 8% | 4.58d | 8.5d |  |  |  | 72h | 6h |
| 103 | 17.1 | Data Access (domain, and DAO) | 3d | 2010-12-14 A | 2010-12-16 | 88 | 25% | 2.25d | 10d |  |  | Eric | 24h | 6h |
| 104 | 17.2 | Connect Search UI to backend | 1w | 2010-12-13 | 2010-12-20 | 85 |  |  | 8.5d |  |  | Eric | 40h |  |
| 105 | 17.3 | AIM de-identification configuration | 1d | 2010-12-13 | 2010-12-14 | 85 |  |  | 12.5d |  |  | Eric | 8h |  |
